# Bank-Settlement

Schedule from MS Project, 2025-10-03 to 2025-10-31.

## Calendars

- Standard: Mon-Fri 08:00-12:00, 13:00-17:00; Sat-Sun off.

## Schedule

| ID | WBS | Task | Type | Duration | Start | Finish | Predecessors | Total slack | Constraint |
| --- | --- | --- | --- | --- | --- | --- | --- | --- | --- |
| 1 | 1 | **NY Bank (SSI) to support a new Fedwire ABA** |  | 21d | 2025-10-03 | 2025-10-31 |  | 0d |  |
| 2 | 1.1 | **ACI Configurations (UPF/APP)** |  | 10d | 2025-10-03 | 2025-10-16 |  | 0d |  |
| 3 | 1.1.1 | Configure MTS |  | 6d | 2025-10-03 | 2025-10-10 |  | 0d | start no earlier than 2025-10-03 |
| 4 | 1.1.2 | Upgrade Internal UPF (Oct GTI) |  | 2d | 2025-10-13 | 2025-10-14 | 3 | 0d |  |
| 5 | 1.1.3 | ACI Internal UPF Config ABA |  | 2d | 2025-10-15 | 2025-10-16 | 4 | 0d |  |
| 6 | 1.1.4 | Milestone:- Configuration Completed | milestone | 0d | 2025-10-16 | 2025-10-16 | 5 | 0d |  |
| 7 | 1.2 | **Testing** |  | 9d | 2025-10-17 | 2025-10-29 |  | 0d |  |
| 8 | 1.2.1 | Configure MTS QA Environment |  | 2d | 2025-10-17 | 2025-10-20 | 6 | 0d |  |
| 9 | 1.2.2 | Connectivity Testing (E2E) |  | 2d | 2025-10-21 | 2025-10-22 | 8 | 0d |  |
| 10 | 1.2.3 | Create test scripts | milestone | 0d | 2025-10-22 | 2025-10-22 | 9 | 0d |  |
| 11 | 1.2.4 | Review Test Scripts | milestone | 0d | 2025-10-22 | 2025-10-22 | 10 | 0d |  |
| 12 | 1.2.5 | QA Testing |  | 5d | 2025-10-23 | 2025-10-29 | 11 | 0d |  |
| 13 | 1.2.6 | Milestone:- Testing Completed | milestone | 0d | 2025-10-29 | 2025-10-29 | 12 | 2d |  |
| 14 | 1.3 | **Delivery** |  | 2d | 2025-10-30 | 2025-10-31 |  | 0d |  |
| 15 | 1.3.1 | Delivery of MTS Configuration (Config Express) |  | 1d | 2025-10-30 | 2025-10-30 | 12 | 0d | start no earlier than 2025-10-23 |
| 16 | 1.3.2 | Deploy at SSB |  | 1d | 2025-10-31 | 2025-10-31 | 15 | 0d |  |
| 17 | 1.3.3 | Milestone:- SSB Build Completed | milestone | 0d | 2025-10-31 | 2025-10-31 | 16 | 0d |  |
| 19 | 1.3.4 | Support to get on production | manual | 1d? | 2025-10-30 | 2025-10-30 |  |  |  |
