# Direct Cover scenario

Schedule from MS Project, 2026-02-23 to 2026-03-25.

## Calendars

- Standard: Mon-Fri 08:00-12:00, 13:00-17:00; Sat-Sun off.

## Resources

| Resource |
| --- |
| JeanH |
| ACI |
| PCS |
| ACI GA |

## Schedule

| ID | WBS | Task | Type | Duration | Start | Finish | Predecessors | Total slack | Constraint | Resources | Work |
| --- | --- | --- | --- | --- | --- | --- | --- | --- | --- | --- | --- |
| 1 | 1 | **Bank Settlement** |  | 23d | 2026-02-23 | 2026-03-25 |  | 0d |  |  | 184h |
| 2 | 1.1 | **ACI Configurations (APP)** |  | 6d | 2026-02-23 | 2026-03-02 |  | 0d |  |  | 48h |
| 3 | 1.1.1 | Configure MTS |  | 6d | 2026-02-23 | 2026-03-02 |  | 0d | start no earlier than 2026-02-23 | JeanH | 48h |
| 4 | 1.1.2 | Upgrade Internal UPF | milestone | 0d | 2026-03-02 | 2026-03-02 | 3 | 0d |  |  |  |
| 5 | 1.1.3 | Milestone:- Configuration Completed | milestone | 0d | 2026-03-02 | 2026-03-02 | 4 | 0d |  |  |  |
| 6 | 1.2 | **Testing** |  | 15d | 2026-03-03 | 2026-03-23 |  | 0d |  |  | 120h |
| 7 | 1.2.1 | Configure MTS QA Environment |  | 2d | 2026-03-03 | 2026-03-04 | 5 | 0d | start no earlier than 2026-02-02 | JeanH | 16h |
| 8 | 1.2.2 | Connectivity Testing (E2E) |  | 2d | 2026-03-05 | 2026-03-06 | 7 | 0d | start no earlier than 2026-02-02 | ACI | 16h |
| 9 | 1.2.3 | Create test scripts | milestone | 0d | 2026-03-06 | 2026-03-06 | 8 | 0d |  | PCS |  |
| 10 | 1.2.4 | Review Test Scripts |  | 1d | 2026-03-09 | 2026-03-09 | 9 | 0d |  | PCS | 8h |
| 11 | 1.2.5 | QA Testing |  | 10d | 2026-03-10 | 2026-03-23 | 10 | 0d |  | PCS | 80h |
| 12 | 1.2.6 | Milestone:- Testing Completed | milestone | 0d | 2026-03-23 | 2026-03-23 | 11 | 2d |  |  |  |
| 13 | 1.3 | **Delivery** |  | 2d | 2026-03-24 | 2026-03-25 |  | 0d |  |  | 16h |
| 14 | 1.3.1 | Delivery of MTS Configuration (Config Express) |  | 1d | 2026-03-24 | 2026-03-24 | 11 | 0d | start no earlier than 2025-10-23 | ACI GA | 8h |
| 15 | 1.3.2 | Deploy at SSB |  | 1d | 2026-03-25 | 2026-03-25 | 14 | 0d |  | ACI GA | 8h |
| 16 | 1.3.3 | Milestone:- SSB Build Completed | milestone | 0d | 2026-03-25 | 2026-03-25 | 15 | 0d |  |  |  |
| 17 | 1.4 | **ACI- Handover process** |  | 7d | 2026-02-23 | 2026-03-03 |  |  |  |  |  |
| 18 | 1.4.1 | Create Ticket | manual | 1d | 2026-02-23 | 2026-02-23 |  |  |  |  |  |
| 19 | 1.4.2 | Prepare Documentation | manual | 4d | 2026-02-23 | 2026-02-26 | 18 |  |  |  |  |
| 20 | 1.4.3 | Session Knowledge Transfer H24 | manual | 2d | 2026-02-23 | 2026-02-24 | 19 |  |  |  |  |
| 21 | 1.4.4 | Milestone:- SSB Build Completed | milestone, manual | 0d | 2026-02-23 | 2026-02-23 | 20 |  |  |  |  |
| 22 | 1.5 | **Testing Bank - Go Live** |  | 2d | 2026-03-24 | 2026-03-25 |  |  |  |  |  |
| 23 | 1.5.1 | Delivery of MTS Configuration (Config Express) | manual | 1d | 2026-03-24 | 2026-03-24 |  |  |  |  |  |
| 24 | 1.5.2 | Deploy at SSB | manual | 1d | 2026-03-24 | 2026-03-24 |  |  |  |  |  |
| 25 | 1.5.3 | Milestone:- SSB Build Completed | milestone, manual | 0d | 2026-03-24 | 2026-03-24 |  |  |  |  |  |
