# IBT

Schedule from MS Project, 2025-10-31 to 2025-11-28.

## Calendars

- Standard: Mon-Fri 08:00-12:00, 13:00-17:00; Sat-Sun off.

## Schedule

| ID | WBS | Task | Type | Duration | Start | Finish | Predecessors | Total slack | Constraint |
| --- | --- | --- | --- | --- | --- | --- | --- | --- | --- |
| 1 | 1 | **SSC - US Boston (SSB) New Transact Lines (for all Transact accounts) & New Trancodes for IBT** |  | 21d | 2025-10-31 | 2025-11-28 |  | 0d |  |
| 2 | 1.1 | **ACI Configurations (UPF/APP)** |  | 8d | 2025-10-31 | 2025-11-11 |  | 0d |  |
| 3 | 1.1.1 | Configure MTS |  | 6d | 2025-10-31 | 2025-11-07 |  | 0d | start no earlier than 2025-10-31 |
| 4 | 1.1.2 | ACI Internal UPF Config |  | 2d | 2025-11-10 | 2025-11-11 | 3 | 0d | start no earlier than 2025-10-13 |
| 5 | 1.1.3 | Milestone:- Configuration Completed | milestone | 0d | 2025-11-11 | 2025-11-11 | 4 | 0d |  |
| 6 | 1.2 | **Testing** |  | 11d | 2025-11-12 | 2025-11-26 |  | 0d |  |
| 7 | 1.2.1 | Configure MTS QA Environment |  | 2d | 2025-11-12 | 2025-11-13 | 5 | 0d |  |
| 8 | 1.2.2 | Connectivity Testing (E2E) |  | 3d | 2025-11-14 | 2025-11-18 | 7 | 0d |  |
| 9 | 1.2.3 | Create test scripts | milestone | 0d | 2025-11-18 | 2025-11-18 | 8 | 0d |  |
| 10 | 1.2.4 | Review Test Scripts | milestone | 0d | 2025-11-18 | 2025-11-18 | 9 | 0d |  |
| 11 | 1.2.5 | QA Testing |  | 6d | 2025-11-19 | 2025-11-26 | 10 | 0d |  |
| 12 | 1.2.6 | Milestone:- Testing Completed | milestone | 0d | 2025-11-26 | 2025-11-26 | 11 | 0d |  |
| 13 | 1.3 | **Delivery** |  | 2d | 2025-11-27 | 2025-11-28 |  | 0d |  |
| 14 | 1.3.1 | Delivery of MTS Configuration (Config Express) |  | 1d | 2025-11-27 | 2025-11-27 | 12 | 0d | start no earlier than 2025-10-29 |
| 15 | 1.3.2 | Deploy at TFC |  | 1d | 2025-11-28 | 2025-11-28 | 14 | 0d |  |
| 16 | 1.3.3 | Milestone:- TFC Build Completed | milestone | 0d | 2025-11-28 | 2025-11-28 | 15 | 0d |  |
