Schedule from MS Project, 2025-07-03 to 2025-07-17, A marks actual dates.

## Calendars

- Standard: Mon-Fri 08:00-12:00, 13:00-17:00; Sat-Sun off.

## Resources

| Resource |
| --- |
| Bank |
| PCS |
| PSC |
| Katheeja |
| Shan |
| Neethu |
| Amit |

## Schedule

| ID | WBS | Task | Type | Duration | Start | Finish | Complete | Remaining | Total slack | Resources | Work | Actual work |
| --- | --- | --- | --- | --- | --- | --- | --- | --- | --- | --- | --- | --- |
| 2 | 1 | **Sprint 9** |  | 11d | 2025-07-03 A | 2025-07-17 | 68% | 3.5d | 0d |  | 792h | 540h |
| 3 | 1.1 | PACSH-85672-[DEMO] ACI - CHAPS END-END Validations - [Target dt - 7/17] - PACS.008 STP [ Pacs.009 , pacs,009 cov STP ] | manual | 11d | 2025-07-03 A | 2025-07-17 | 64% | 4d |  | Katheeja | 88h | 56h |
| 4 | 1.2 | PACSH-73213-[Document] ACI - Create & Review Bank Adapter Solution document for US Markets | manual | 10d | 2025-07-03 A | 2025-07-16 | 60% | 4d |  | Bank | 80h | 48h |
| 5 | 1.3 | PACSH-88900-[Working Session] ACI - Enable Repair & Edits CHAPS Outbound payment Processing: Control Center [Target dt - 7/16] before 7/31 | manual | 9d | 2025-07-03 A | 2025-07-16 | 60% | 3.6d |  | Shan | 72h | 43.2h |
| 6 | 1.4 | PACSH-87897-[Working Session] ACI - Enable RITS & LYNX Outbound Payment Processing lines in UPF | manual | 10d | 2025-07-03 A | 2025-07-16 | 90% | 1d |  | Katheeja | 80h | 72h |
| 7 | 1.5 | PACSH-89240-[Working Session] ACI - US SSB - FED & SSI-FED BTR flow validations - STP & NON STP - PACS009/COV | manual | 10d | 2025-07-03 A | 2025-07-16 | 90% | 1d |  | Katheeja | 80h | 72h |
| 8 | 1.6 | PACSH-89246-[Working Session] ACI - US SSI- CHP BTR flow validations - STP & NON STP - PACS009/COV | manual | 9d | 2025-07-03 A | 2025-07-16 | 90% | 0.9d |  | Neethu | 72h | 64.8h |
| 9 | 1.7 | PACSH-88861-ACI - Enable CHAPS Outbound Payment Processing lines in MTS [Target dt - 7/13] before 7/31 | manual | 10d | 2025-07-03 A | 2025-07-16 | 50% | 5d |  | Katheeja | 80h | 40h |
| 10 | 1.8 | PACSH-91572-ACI - Enable Intl.RTPS Outbound Payment Processing lines in UPF->MTS linkage [Target dt - 7/16] before 7/31 | manual | 10d | 2025-07-03 A | 2025-07-16 | 50% | 5d |  | Shan | 80h | 40h |
| 11 | 1.9 | PACSH-85674-ACI - Intl. RTPS Code Delivery (UPF & Control Center June SP - Target July 11) [Tech] | manual | 10d | 2025-07-03 A | 2025-07-16 | 80% | 2d |  | Amit | 80h | 64h |
| 12 | 1.10 | PACSH-89190-ACI CASE 03734528 - CAMT050? GBM-Intl RTPS do external screening via FIRCO for TARGET2 CAMT050? | manual | 10d | 2025-07-03 A | 2025-07-16 | 50% | 5d |  | Katheeja | 80h | 40h |
