# SSB-Plan-6202025

Schedule from MS Project, 2025-06-05 to 2025-06-26, A marks actual dates.
ACI Worldwide

## Calendars

- Standard: Mon-Fri 08:00-12:00, 13:00-17:00; Sat-Sun off.

## Resources

| Resource |
| --- |
| PCS |
| SSB |
| Jean H |

## Schedule

| ID | WBS | Task | Type | Duration | Start | Finish | Complete | Remaining | Total slack | Resources | Work | Actual work |
| --- | --- | --- | --- | --- | --- | --- | --- | --- | --- | --- | --- | --- |
| 1 | 1 | **SSB/SSI Bank Adaptor Project (Domestic)** |  | 16d | 2025-06-05 A | 2025-06-26 | 62% | 6.15d | 0d |  | 120h | 64h |
| 2 | 1.1 | **Domestic Delivery** |  | 1d | 2025-06-05 A | 2025-06-05 A | 100% |  |  |  | 40h | 40h |
| 3 | 1.1.1 | Requirement Document by the Bank | manual | 1d | 2025-06-05 A | 2025-06-05 A | 100% |  |  | PCS | 8h | 8h |
| 4 | 1.1.2 | SSD Document under ACI interal review | manual | 1d | 2025-06-05 A | 2025-06-05 A | 100% |  |  | PCS | 8h | 8h |
| 5 | 1.1.3 | SSD Signoff by SSB | manual | 1d | 2025-06-05 A | 2025-06-05 A | 100% |  |  | SSB | 8h | 8h |
| 6 | 1.1.4 | [DEMO] ACI: Control Center exception handling (Domestic Int) | manual | 1d | 2025-06-05 A | 2025-06-05 A | 100% |  |  | PCS | 8h | 8h |
| 7 | 1.1.5 | Deliver Documentation | manual | 1d | 2025-06-05 A | 2025-06-05 A | 100% |  |  | PCS | 8h | 8h |
| 8 | 1.2 | ACI Configurations (UPF/APP) |  | 5d | 2025-06-20 | 2025-06-26 |  |  | 0d | Jean H | 40h |  |
| 9 | 1.3 | ACI Internal Control Center Config | manual | 1d | 2025-06-05 A | 2025-06-05 A | 100% |  |  | PCS | 8h | 8h |
| 10 | 1.4 | ACI Internal UPF Config | manual | 1d | 2025-06-05 A | 2025-06-05 A | 100% |  |  | PCS | 8h | 8h |
| 11 | 1.5 | ACI Internal App Config | manual | 1d | 2025-06-05 A | 2025-06-05 A | 100% |  |  | PCS | 8h | 8h |
| 12 | 1.6 | **Testing** |  | 0d | 2025-06-20 | 2025-06-20 |  |  | 5d |  | 16h |  |
| 13 | 1.6.1 | Connectivity Testing (E2E) | manual | 1d | 2025-06-20 | 2025-06-20 |  |  |  | PCS | 8h |  |
| 14 | 1.6.2 | QA Testing | manual | 1d | 2025-06-20 | 2025-06-20 |  |  |  |  |  |  |
| 15 | 1.6.3 | Smoke Testing | manual | 1d | 2025-06-20 | 2025-06-20 |  |  |  | SSB | 8h |  |
| 16 | 1.7 | **Delivery** |  | 0d | 2025-06-20 | 2025-06-20 |  |  | 5d |  |  |  |
| 17 | 1.7.1 | Build | manual | 1d | 2025-06-20 | 2025-06-20 |  |  |  |  |  |  |
| 18 | 1.7.2 | Code Delivery to | manual | 1d | 2025-06-20 | 2025-06-20 |  |  |  |  |  |  |
| 19 | 1.7.3 | Product Scheduled Release (Customer Support Testing Incident) | manual | 1d | 2025-06-20 | 2025-06-20 |  |  |  |  |  |  |
| 20 | 2 | **International Bank Adaptor Project** |  | 1d | 2025-06-20 A | 2025-06-20 A | 100% |  |  |  |  |  |
| 21 | 2.1 | **International Delivery** |  | 1d | 2025-06-20 A | 2025-06-20 A | 100% |  |  |  |  |  |
| 22 | 2.1.1 | SSD Document Send for bank signoff ( International) | manual | 1d | 2025-06-20 A | 2025-06-20 A | 100% |  |  |  |  |  |
| 23 | 2.1.2 | [DEMO] ACI: Technical ACK/NACK (International Env) | manual | 1d | 2025-06-20 A | 2025-06-20 A | 100% |  |  |  |  |  |
| 24 | 2.1.3 | Deliver Documentation |  | 1d | 2025-06-20 A | 2025-06-20 A | 100% |  |  |  |  |  |

| ID | WBS | Task | Type | Duration | Start | Finish | Complete | Resources | Work | Actual work |
| --- | --- | --- | --- | --- | --- | --- | --- | --- | --- | --- |
| 25 | 3 | **ACI CONFIGURATION** |  | 7d | 2025-06-11 A | 2025-06-19 A | 100% |  | 112h | 112h |
| 26 | 3.1 | ACI Configurations (UPF/APP) | manual | 1d | 2025-06-11 | 2025-06-11 |  |  |  |  |
| 27 | 3.2 | ACI Internal Control Center Config | manual | 1d | 2025-06-11 | 2025-06-11 |  |  |  |  |
| 28 | 3.3 | ACI Internal UPF Config LON-CHAPS | manual | 7d | 2025-06-11 A | 2025-06-19 A | 100% | PCS | 56h | 56h |
| 29 | 3.4 | Connectivity Testing (E2E) LON-CHAPS | manual | 1d | 2025-06-11 A | 2025-06-11 A | 100% |  |  |  |
| 30 | 3.5 | QA Testing LON-CHAPS | manual | 1d | 2025-06-11 | 2025-06-11 |  |  |  |  |
| 31 | 3.6 | ACI Internal UPF Config MUN-TARGET2 | manual | 7d | 2025-06-11 A | 2025-06-19 A | 100% | PCS | 56h | 56h |
| 32 | 3.7 | Connectivity Testing (E2E) MUN-TARGET2 | manual | 1d | 2025-06-11 A | 2025-06-11 A | 100% |  |  |  |
| 33 | 3.8 | QA Testing MUN-TARGET2 | manual | 1d | 2025-06-11 | 2025-06-11 |  |  |  |  |
| 34 | 3.9 | ACI Internal UPF Config TOR-LYNX | manual | 7d | 2025-06-11 A | 2025-06-19 A | 100% |  |  |  |
| 35 | 3.10 | Connectivity Testing (E2E) TOR-LYNX | manual | 1d? | 2025-06-11 | 2025-06-11 |  |  |  |  |
| 36 | 3.11 | QA Testing TOR-LYNX | manual | 1d? | 2025-06-11 | 2025-06-11 |  |  |  |  |
| 37 | 3.12 | ACI Internal UPF Config SYD-RITS | manual | 1d | 2025-06-11 | 2025-06-11 |  |  |  |  |
| 38 | 3.13 | Connectivity Testing (E2E) SYD-RITS | manual | 1d | 2025-06-11 | 2025-06-11 |  |  |  |  |
| 39 | 3.14 | QA Testing SYD-RITS | manual | 1d | 2025-06-11 | 2025-06-11 |  |  |  |  |
| 40 | 3.15 | ACI Internal UPF Config HON-CHATS | manual | 1d | 2025-06-11 | 2025-06-11 |  |  |  |  |
| 41 | 3.16 | Connectivity Testing (E2E) HON-CHATS | manual | 1d | 2025-06-11 | 2025-06-11 |  |  |  |  |
| 42 | 3.17 | QA Testing HON-CHATS | manual | 1d | 2025-06-11 | 2025-06-11 |  |  |  |  |
| 43 | 3.18 | ACI Internal UPF Config TAI-FISC | manual | 1d | 2025-06-11 | 2025-06-11 |  |  |  |  |
| 44 | 3.19 | Connectivity Testing (E2E) TAI-FISC | manual | 1d | 2025-06-11 | 2025-06-11 |  |  |  |  |
| 45 | 3.20 | QA Testing TAI-FISC | manual | 1d | 2025-06-11 | 2025-06-11 |  |  |  |  |
| 46 | 3.21 | ACI Internal App Config ALL | manual | 1d | 2025-06-11 | 2025-06-11 |  |  |  |  |
| 47 | 3.22 | SOA Server configuration disucssion | manual | 1d | 2025-06-11 | 2025-06-11 |  |  |  |  |
| 48 | 3.23 | Create Test Scripts LON-CHAPS | manual | 1d | 2025-06-11 | 2025-06-11 |  |  |  |  |
| 49 | 4 | UPDATE ACI UPF ENV For Jun Service Pack (All markets ) ????? | manual | 1d | 2025-06-20 | 2025-06-20 |  |  |  |  |

| ID | WBS | Task | Type | Duration | Start | Finish | Total slack |
| --- | --- | --- | --- | --- | --- | --- | --- |
| 50 | 5 | **SMOKE TESTING** |  | 0d | 2025-06-20 | 2025-06-20 | 5d |
| 51 | 5.1 | Smoke Testing LON-CHAPS | manual | 1d | 2025-06-20 | 2025-06-20 |  |
| 52 | 5.2 | Smoke Testing MUN-TARGET2 | manual | 1d | 2025-06-20 | 2025-06-20 |  |
| 53 | 5.3 | Smoke Testing SYD-RITS | manual | 1d | 2025-06-20 | 2025-06-20 |  |
| 54 | 5.4 | Smoke Testing TOR-LYNX | manual | 1d | 2025-06-20 | 2025-06-20 |  |
| 55 | 5.5 | Smoke Testing HON-CHATS | manual | 1d | 2025-06-20 | 2025-06-20 |  |
| 56 | 5.6 | Smoke Testing TAI-FISC | manual | 1d | 2025-06-20 | 2025-06-20 |  |
| 57 | 6 | **Delivery** |  | 0d | 2025-06-20 | 2025-06-20 | 5d |
| 58 | 6.1 | Build | manual | 1d | 2025-06-20 | 2025-06-20 |  |
| 59 | 6.2 | Code Delivery to | manual | 1d | 2025-06-20 | 2025-06-20 |  |
| 60 | 7 | Product Scheduled Release (Customer Support Testing Incident) | manual | 1d | 2025-06-20 | 2025-06-20 |  |
