# Sprints-10

Schedule from MS Project, 2025-07-03 to 2025-08-13, A marks actual dates.

## Calendars

- Standard: Mon-Fri 08:00-12:00, 13:00-17:00; Sat-Sun off.

## Resources

| Resource |
| --- |
| Bank |
| PCS |
| PSC |
| Katheeja |
| Shan |
| Neethu |
| Amit |
| Sai |
| Tejas |
| Tejas/Sai |
| Katheeja/Neethu |
| Dolores |
| SME |
| SME / Bank |

## Schedule

| ID | WBS | Task | Type | Duration | Start | Finish | Complete | Remaining | Total slack | Constraint | Resources | Work | Actual work |
| --- | --- | --- | --- | --- | --- | --- | --- | --- | --- | --- | --- | --- | --- |
| 2 | 1 | **Sprint 9** |  | 11d | 2025-07-03 A | 2025-07-17 | 98% | 0.2d | 0d |  |  | 880h | 865.6h |
| 3 | 1.1 | PACSH-85672-[DEMO] ACI - CHAPS END-END Validations - [Target dt - 7/17] - PACS.008 STP [ Pacs.009 , pacs,009 cov STP ] | manual | 11d | 2025-07-03 A | 2025-07-17 A | 100% |  |  |  | Katheeja | 88h | 88h |
| 4 | 1.2 | PACSH-73213-[Document] ACI - Create & Review Bank Adapter Solution document for US Markets | manual | 10d | 2025-07-03 A | 2025-07-16 A | 100% |  |  |  | Amit | 80h | 80h |
| 5 | 1.3 | PACSH-88900-[Working Session] ACI - Enable Repair & Edits CHAPS Outbound payment Processing: Control Center [Target dt - 7/16] before 7/31 | manual | 9d | 2025-07-03 A | 2025-07-16 | 80% | 1.8d |  |  | Shan | 72h | 57.6h |
| 6 | 1.4 | PACSH-87897-[Working Session] ACI - Enable RITS & LYNX Outbound Payment Processing lines in UPF | manual | 10d | 2025-07-03 A | 2025-07-16 A | 100% |  |  |  | Katheeja | 80h | 80h |
| 7 | 1.5 | PACSH-89240-[Working Session] ACI - US SSB - FED & SSI-FED BTR flow validations - STP & NON STP - PACS009/COV | manual | 10d | 2025-07-03 A | 2025-07-16 A | 100% |  |  |  | Katheeja; Neethu | 160h | 160h |
| 8 | 1.6 | PACSH-89246-[Working Session] ACI - US SSI- CHP BTR flow validations - STP & NON STP - PACS009/COV | manual | 9d | 2025-07-03 A | 2025-07-16 A | 100% |  |  |  | Neethu | 72h | 72h |
| 9 | 1.7 | PACSH-88861-ACI - Enable CHAPS Outbound Payment Processing lines in MTS [Target dt - 7/13] before 7/31 | manual | 10d | 2025-07-03 A | 2025-07-16 A | 100% |  |  |  | Katheeja | 80h | 80h |
| 10 | 1.8 | PACSH-91572-ACI - Enable Intl.RTPS Outbound Payment Processing lines in UPF->MTS linkage [Target dt - 7/16] before 7/31 | manual | 10d | 2025-07-03 A | 2025-07-16 A | 100% |  |  |  | Shan | 80h | 80h |
| 11 | 1.9 | PACSH-85674-ACI - Intl. RTPS Code Delivery (UPF & Control Center June SP - Target July 11) [Tech] | manual | 10d | 2025-07-03 A | 2025-07-16 A | 100% |  |  |  | Amit | 80h | 80h |
| 12 | 1.10 | PACSH-89190-ACI CASE 03734528 - CAMT050? GBM-Intl RTPS do external screening via FIRCO for TARGET2 CAMT050? | manual | 10d | 2025-07-03 A | 2025-07-16 A | 100% |  |  |  | Katheeja | 80h | 80h |
| 13 | 1.11 | H24-679372- GBM Enterprise ISO : IBS NAK equivalent processing in ENTERPRISEISO model (Bank-Adapter Flow) | manual | 1d | 2025-07-16 A | 2025-07-16 A | 100% |  |  |  | Shan | 8h | 8h |
| 14 | 2 | **Sprint 10** |  | 11d | 2025-07-16 A | 2025-07-30 A | 100% |  |  |  |  | 1144h | 1144h |
| 15 | 2.1 | **PACSH-95796-[Working Session] ACI - Explore the options for displaying Additional Payment Event Details in Control Center Related Tab** |  | 11d | 2025-07-16 A | 2025-07-30 A | 100% |  |  |  |  | 264h | 264h |
| 16 | 2.1.1 | Generate outbound pacs.008 for CHAPS market end to end with SAA simulated response | manual | 11d | 2025-07-16 A | 2025-07-30 A | 100% |  |  |  | PCS | 88h | 88h |
| 17 | 2.1.2 | Analyze the message logging in related tab of CC screen | manual | 11d | 2025-07-16 A | 2025-07-30 A | 100% |  |  |  | PCS | 88h | 88h |
| 18 | 2.1.3 | Identify resolution via UPF rules configuration to align the missing or incorrect message records |  | 11d | 2025-07-16 A | 2025-07-30 A | 100% |  |  | finish no earlier than 2025-07-30 | PCS | 88h | 88h |
| 19 | 2.2 | **PACSH-95806-[Working Session] ACI - [CHATS & FISC] Consume Outbound Payment instr MX + send UPF Technical Acknowledgments** |  | 11d | 2025-07-16 A | 2025-07-30 A | 100% |  |  |  |  | 440h | 440h |
| 20 | 2.2.1 | Configure UPF line with source BIS | manual | 11d | 2025-07-16 A | 2025-07-30 A | 100% |  |  |  | PCS | 88h | 88h |
| 21 | 2.2.2 | Message Interface (MQ) | manual | 11d | 2025-07-16 A | 2025-07-30 A | 100% |  |  |  | PCS | 88h | 88h |
| 22 | 2.2.3 | UPF end-point Config | manual | 11d | 2025-07-16 A | 2025-07-30 A | 100% |  |  |  | PCS | 88h | 88h |
| 23 | 2.2.4 | UPF Channel Config | manual | 11d | 2025-07-16 A | 2025-07-30 A | 100% |  |  |  | PCS | 88h | 88h |
| 24 | 2.2.5 | Platform Mgr Rules | manual | 11d | 2025-07-16 A | 2025-07-30 A | 100% |  |  |  | PCS | 88h | 88h |
| 25 | 2.3 | **PACSH-88900-[Working Session] ACI - Enable Repair & Edits CHAPS Outbound payment Processing: Control Center [Target dt - 7/16] before 7/31** |  | 11d | 2025-07-16 A | 2025-07-30 A | 100% |  |  |  | Shan | 440h | 440h |
| 26 | 2.3.1 | CCU I Q migration | manual | 11d | 2025-07-16 A | 2025-07-30 A | 100% |  |  |  | PCS | 88h | 88h |
| 27 | 2.3.2 | Location Provitioning | manual | 11d | 2025-07-16 A | 2025-07-30 A | 100% |  |  |  | PCS | 88h | 88h |
| 28 | 2.3.3 | MTS irm rule changes | manual | 11d | 2025-07-16 A | 2025-07-30 A | 100% |  |  |  | PCS | 88h | 88h |
| 29 | 2.3.4 | Functional Test Cases - 20 Cases | manual | 11d | 2025-07-16 A | 2025-07-30 A | 100% |  |  |  | PCS | 88h | 88h |
| 30 | 3 | PACSH-96347-[Working Session] Validate FIRCO invocation along with the FIRCO RFML request v10 xml generation data for swift.cbprplus.02 and swift.cbprplus.03 | manual | 11d | 2025-07-16 A | 2025-07-30 A | 100% |  |  |  |  |  |  |

| ID | WBS | Task | Type | Duration | Start | Finish | Complete | Remaining | Total slack | Constraint | Resources | Work | Actual work |
| --- | --- | --- | --- | --- | --- | --- | --- | --- | --- | --- | --- | --- | --- |
| 31 | 4 | **Strech Sprint 10** |  | 11d | 2025-07-16 A | 2025-07-30 | 37% | 6.91d | 0d |  |  | 1144h | 369.6h |
| 32 | 4.1 | **NEW - PACSH-95801-[Working Session] ACI - Solution IBS CAN short NAK to generate Negative Acknowledgements with required payment & error info in RTPS for Manually Cancelled Payments** |  | 11d | 2025-07-16 A | 2025-07-30 | 5% | 10.45d |  |  |  | 352h | 17.6h |
| 33 | 4.1.1 | Generate pacs.002 CANC scenario for BIS source pacs.008 outbound message(future dated) | manual | 11d | 2025-07-16 A | 2025-07-30 | 20% | 8.8d |  |  | PCS | 88h | 17.6h |
| 34 | 4.1.2 | Analyze format fields of pacs.002 CANC | manual | 11d | 2025-07-16 | 2025-07-30 |  |  |  |  | PCS | 88h |  |
| 35 | 4.1.3 | Identify RTPS solution(GBM) for enrichment of two missing fields | manual | 11d | 2025-07-16 | 2025-07-30 |  |  |  |  | PCS | 88h |  |
| 36 | 4.1.4 | Check for enrichment rules(configurations) to be applied on the Pacs.002 CANC [BA NAK response] from MTS app config/development team | manual | 11d | 2025-07-16 | 2025-07-30 |  |  |  |  | PCS | 88h |  |
| 37 | 4.2 | **PACSH-79853-[Duplicate?] ACI - Enable FISC & CHATS Outbound Payment Processing lines in UPF - STRECH Story** |  | 11d | 2025-07-16 A | 2025-07-30 | 50% | 5.5d |  |  |  | 792h | 352h |
| 38 | 4.2.1 | Message Interface (MQ) | manual | 11d | 2025-07-16 A | 2025-07-30 A | 100% |  |  |  | PCS | 88h | 88h |
| 39 | 4.2.2 | Platform Manager | manual | 11d | 2025-07-16 A | 2025-07-30 A | 100% |  |  |  | PCS | 88h | 88h |
| 40 | 4.2.3 | MTS v6 Code Changes | manual | 11d | 2025-07-16 | 2025-07-30 |  |  |  |  | PCS | 88h |  |
| 41 | 4.2.4 | MTS v6 Config | manual | 11d | 2025-07-16 | 2025-07-30 |  |  |  |  | PCS | 88h |  |
| 42 | 4.2.5 | UPF-MCAS v5.0.4 Code Changes | manual | 11d | 2025-07-16 | 2025-07-30 |  |  |  |  | PCS | 88h |  |
| 43 | 4.2.6 | Control Centre Code Changes | manual | 11d | 2025-07-16 | 2025-07-30 |  |  |  |  | PCS | 88h |  |
| 44 | 4.2.7 | UPF EndpointConfig | manual | 11d | 2025-07-16 A | 2025-07-30 A | 100% |  |  |  | PCS | 88h | 88h |
| 45 | 4.2.8 | UPF Line Config | manual | 11d | 2025-07-16 A | 2025-07-30 A | 100% |  |  |  | PCS | 88h | 88h |
| 46 | 4.2.9 | Control Center Config | manual | 11d | 2025-07-16 | 2025-07-30 |  |  |  |  | PCS | 88h |  |
| 47 | 4.2.10 | **PACSH-96296-[STRETCH] [Working Session] ACI - Target 2 Camt.050 processing : end-end validations [using simulated samples]** |  | 11d | 2025-07-16 A | 2025-07-30 A | 100% |  |  |  |  |  |  |
| 48 | 4.2.10.1 | PACSH-96336-Validate incoming camt.025 matching for the outbound camt.050 [using simulated samples] | manual | 11d | 2025-07-16 A | 2025-07-30 A | 100% |  |  |  |  |  |  |
| 49 | 5 | **Sprint 11** |  | 10d? | 2025-07-31 A | 2025-08-13 | 58% | 4.17d? | 0d |  |  | 880h | 520h |
| 50 | 5.1 | **PACSH-96296-[Working session] ACI - Target2 Camt.050 processing : end-end validations.** |  | 10d | 2025-07-31 A | 2025-08-13 A | 100% |  |  |  | Sai | 240h | 240h |
| 51 | 5.1.1 | Downloaded the Camt.025 from TARGET2 EBA portal | manual | 10d | 2025-07-31 A | 2025-08-13 A | 100% |  |  |  | Sai | 80h | 80h |
| 52 | 5.1.2 | Validate incoming camt.025 matching for the outbound camt.050 [using simulated samples] | manual | 10d | 2025-07-31 A | 2025-08-13 A | 100% |  |  |  | Sai | 80h | 80h |
| 53 | 5.2 | PACSH-95820 ACI Ticket-3713432 -Requirements fo RTPS NY Bank(SSI) to support a new Fedwire ABA | manual | 10d | 2025-07-31 | 2025-08-13 |  |  |  |  | SME / Bank | 80h |  |
| 54 | 5.3 | **PACSH-95825 ACI Ticket-03711383:Requirements fo ACI to configure new SSB IBT Tran codes to support BANK** |  | 10d? | 2025-07-31 A | 2025-08-13 | 25% | 7.5d? |  |  | SME / Bank | 240h | 60h |
| 55 | 5.3.1 | ETA for code | manual | 10d | 2025-07-31 A | 2025-08-13 | 25% | 7.5d |  |  | SME | 80h | 20h |
| 56 | 5.3.2 | Analyze the requirements |  | 10d | 2025-07-31 A | 2025-08-13 | 25% | 7.5d | 0d | finish no earlier than 2025-08-13 | SME | 80h | 20h |
| 57 | 5.4 | PACSH-98277-Waiting update from ACI(Jessica) on the testing results for Trans | manual | 10d | 2025-07-31 A | 2025-08-13 | 25% | 7.5d |  |  | Dolores | 80h | 20h |
| 58 | 5.5 | PACSH-82086-[Working Session] ACI - Target 2 pacs.009 [using simulated samples] [One STP & one Non-STP flow] | manual | 10d | 2025-07-31 A | 2025-08-13 A | 100% |  |  |  | Sai | 80h | 80h |
| 59 | 5.6 | PACSH-79853 RITS END-END Validations [one STP & one non-STP flow] | manual | 10d | 2025-07-31 A | 2025-08-13 | 50% | 5d |  |  | Katheeja | 80h | 40h |
| 60 | 5.7 | PACSH-87211-[STRETCH-1][Working Session] ACI - LYNX END-END Validations | manual | 10d | 2025-07-31 A | 2025-08-13 A | 100% |  |  |  | Katheeja | 80h | 80h |

| ID | WBS | Task | Type | Duration | Start | Finish | Total slack |
| --- | --- | --- | --- | --- | --- | --- | --- |
| 61 | 6 | **Sprint 12** |  | 0d | 2025-07-11 | 2025-07-11 | 24d |
| 62 | 6.1 | PACSH-95820 ACI Ticket-3713432 -Requirements fo RTPS NY Bank(SSI) to support a new Fedwire ABA | manual | 1d | 2025-07-11 | 2025-07-11 |  |
| 63 | 6.2 | PACSH-95820 ACI Ticket-3713432 -Requirements fo RTPS NY Bank(SSI) to support a new Fedwire ABA | manual | 1d | 2025-07-11 | 2025-07-11 |  |
| 64 | 6.3 | PACSH-98277-Waiting update from ACI(Jessica) on the testing results for Trans | manual | 1d | 2025-07-11 | 2025-07-11 |  |
| 65 | 6.4 | <New Task> | manual | 1d? | 2025-07-11 | 2025-07-11 |  |
| 66 | 6.5 | <New Task> | manual | 1d? | 2025-07-11 | 2025-07-11 |  |
| 67 | 6.6 | <New Task> | manual | 1d? | 2025-07-11 | 2025-07-11 |  |
| 68 | 6.7 | **PACSH-95801-[Working Session] ACI - Solution IBS CAN short NAK to generate Negative Acknowledgements with required payment & error info in RTPS for Manually Cancelled Payments** |  | 0d | 2025-07-11 | 2025-07-11 | 24d |
| 69 | 6.7.1 | Check for enrichment rules(configurations) to be applied on the Pacs.002 CANC [BA NAK response] from MTS app config/development team | manual | 1d | 2025-07-11 | 2025-07-11 |  |
| 70 | 6.7.2 | Identify RTPS solution(GBM) for enrichment of two missing fields | manual | 1d | 2025-07-11 | 2025-07-11 |  |
| 71 | 6.7.3 | Analyze format fields of pacs.002 CANC | manual | 1d | 2025-07-11 | 2025-07-11 |  |
| 72 | 6.7.4 | Generate pacs.002 CANC scenario for BIS source pacs.008 outbound message(future dated) | manual | 1d | 2025-07-11 | 2025-07-11 |  |
| 73 | 6.8 | PACSH-84210-Solution IBS CAN short NAK - ACI CASE 3735175 GBM Enterprise ISO : IBS NAK | manual | 1d | 2025-07-11 | 2025-07-11 |  |
