# Sprints-12

Schedule from MS Project, 2025-07-03 to 2026-02-17, A marks actual dates.

## Calendars

- Standard: Mon-Fri 08:00-12:00, 13:00-17:00; Sat-Sun off.

## Resources

| Resource |
| --- |
| Bank |
| PCS |
| PSC |
| Katheeja |
| Shan |
| Neethu |
| Amit |
| Sai |
| Tejas |
| Tejas/Sai |
| Katheeja/Neethu |
| Dolores |
| SME |
| SME / Bank |
| AmiT /PCS |
| Paul |
| Paula |
| Scott |
| jean |
| Prod |
| Pro |
| Sai/prod |

## Schedule

| ID | WBS | Task | Type | Duration | Start | Finish | Complete | Remaining | Total slack | Constraint | Resources | Work | Actual work |
| --- | --- | --- | --- | --- | --- | --- | --- | --- | --- | --- | --- | --- | --- |
| 2 | 1 | **Sprint 9** |  | 11d | 2025-07-03 A | 2025-07-17 | 98% | 0.2d | 0d |  |  | 880h | 865.6h |
| 3 | 1.1 | PACSH-85672-[DEMO] ACI - CHAPS END-END Validations - [Target dt - 7/17] - PACS.008 STP [ Pacs.009 , pacs,009 cov STP ] | manual | 11d | 2025-07-03 A | 2025-07-17 A | 100% |  |  |  | Katheeja | 88h | 88h |
| 4 | 1.2 | PACSH-73213-[Document] ACI - Create & Review Bank Adapter Solution document for US Markets | manual | 10d | 2025-07-03 A | 2025-07-16 A | 100% |  |  |  | Amit | 80h | 80h |
| 5 | 1.3 | PACSH-88900-[Working Session] ACI - Enable Repair & Edits CHAPS Outbound payment Processing: Control Center [Target dt - 7/16] before 7/31 | manual | 9d | 2025-07-03 A | 2025-07-16 | 80% | 1.8d |  |  | Shan | 72h | 57.6h |
| 6 | 1.4 | PACSH-87897-[Working Session] ACI - Enable RITS & LYNX Outbound Payment Processing lines in UPF | manual | 10d | 2025-07-03 A | 2025-07-16 A | 100% |  |  |  | Katheeja | 80h | 80h |
| 7 | 1.5 | PACSH-89240-[Working Session] ACI - US SSB - FED & SSI-FED BTR flow validations - STP & NON STP - PACS009/COV | manual | 10d | 2025-07-03 A | 2025-07-16 A | 100% |  |  |  | Katheeja; Neethu | 160h | 160h |
| 8 | 1.6 | PACSH-89246-[Working Session] ACI - US SSI- CHP BTR flow validations - STP & NON STP - PACS009/COV | manual | 9d | 2025-07-03 A | 2025-07-16 A | 100% |  |  |  | Neethu | 72h | 72h |
| 9 | 1.7 | PACSH-88861-ACI - Enable CHAPS Outbound Payment Processing lines in MTS [Target dt - 7/13] before 7/31 | manual | 10d | 2025-07-03 A | 2025-07-16 A | 100% |  |  |  | Katheeja | 80h | 80h |
| 10 | 1.8 | PACSH-91572-ACI - Enable Intl.RTPS Outbound Payment Processing lines in UPF->MTS linkage [Target dt - 7/16] before 7/31 | manual | 10d | 2025-07-03 A | 2025-07-16 A | 100% |  |  |  | Shan | 80h | 80h |
| 11 | 1.9 | PACSH-85674-ACI - Intl. RTPS Code Delivery (UPF & Control Center June SP - Target July 11) [Tech] | manual | 10d | 2025-07-03 A | 2025-07-16 A | 100% |  |  |  | Amit | 80h | 80h |
| 12 | 1.10 | PACSH-89190-ACI CASE 03734528 - CAMT050? GBM-Intl RTPS do external screening via FIRCO for TARGET2 CAMT050? | manual | 10d | 2025-07-03 A | 2025-07-16 A | 100% |  |  |  | Katheeja | 80h | 80h |
| 13 | 1.11 | H24-679372- GBM Enterprise ISO : IBS NAK equivalent processing in ENTERPRISEISO model (Bank-Adapter Flow) | manual | 1d | 2025-07-16 A | 2025-07-16 A | 100% |  |  |  | Shan | 8h | 8h |
| 14 | 2 | **Sprint 10** |  | 11d | 2025-07-16 A | 2025-07-30 A | 100% |  |  |  |  | 1144h | 1144h |
| 15 | 2.1 | **PACSH-95796-[Working Session] ACI - Explore the options for displaying Additional Payment Event Details in Control Center Related Tab** |  | 11d | 2025-07-16 A | 2025-07-30 A | 100% |  |  |  |  | 264h | 264h |
| 16 | 2.1.1 | Generate outbound pacs.008 for CHAPS market end to end with SAA simulated response | manual | 11d | 2025-07-16 A | 2025-07-30 A | 100% |  |  |  | PCS | 88h | 88h |
| 17 | 2.1.2 | Analyze the message logging in related tab of CC screen | manual | 11d | 2025-07-16 A | 2025-07-30 A | 100% |  |  |  | PCS | 88h | 88h |
| 18 | 2.1.3 | Identify resolution via UPF rules configuration to align the missing or incorrect message records |  | 11d | 2025-07-16 A | 2025-07-30 A | 100% |  |  | finish no earlier than 2025-07-30 | PCS | 88h | 88h |
| 19 | 2.2 | **PACSH-95806-[Working Session] ACI - [CHATS & FISC] Consume Outbound Payment instr MX + send UPF Technical Acknowledgments** |  | 11d | 2025-07-16 A | 2025-07-30 A | 100% |  |  |  |  | 440h | 440h |
| 20 | 2.2.1 | Configure UPF line with source BIS | manual | 11d | 2025-07-16 A | 2025-07-30 A | 100% |  |  |  | PCS | 88h | 88h |
| 21 | 2.2.2 | Message Interface (MQ) | manual | 11d | 2025-07-16 A | 2025-07-30 A | 100% |  |  |  | PCS | 88h | 88h |
| 22 | 2.2.3 | UPF end-point Config | manual | 11d | 2025-07-16 A | 2025-07-30 A | 100% |  |  |  | PCS | 88h | 88h |
| 23 | 2.2.4 | UPF Channel Config | manual | 11d | 2025-07-16 A | 2025-07-30 A | 100% |  |  |  | PCS | 88h | 88h |
| 24 | 2.2.5 | Platform Mgr Rules | manual | 11d | 2025-07-16 A | 2025-07-30 A | 100% |  |  |  | PCS | 88h | 88h |
| 25 | 2.3 | **PACSH-88900-[Working Session] ACI - Enable Repair & Edits CHAPS Outbound payment Processing: Control Center [Target dt - 7/16] before 7/31** |  | 11d | 2025-07-16 A | 2025-07-30 A | 100% |  |  |  | Shan | 440h | 440h |
| 26 | 2.3.1 | CCU I Q migration | manual | 11d | 2025-07-16 A | 2025-07-30 A | 100% |  |  |  | PCS | 88h | 88h |
| 27 | 2.3.2 | Location Provitioning | manual | 11d | 2025-07-16 A | 2025-07-30 A | 100% |  |  |  | PCS | 88h | 88h |
| 28 | 2.3.3 | MTS irm rule changes | manual | 11d | 2025-07-16 A | 2025-07-30 A | 100% |  |  |  | PCS | 88h | 88h |
| 29 | 2.3.4 | Functional Test Cases - 20 Cases | manual | 11d | 2025-07-16 A | 2025-07-30 A | 100% |  |  |  | PCS | 88h | 88h |
| 30 | 3 | PACSH-96347-[Working Session] Validate FIRCO invocation along with the FIRCO RFML request v10 xml generation data for swift.cbprplus.02 and swift.cbprplus.03 | manual | 11d | 2025-07-16 A | 2025-07-30 A | 100% |  |  |  |  |  |  |

| ID | WBS | Task | Type | Duration | Start | Finish | Complete | Remaining | Total slack | Resources | Work | Actual work |
| --- | --- | --- | --- | --- | --- | --- | --- | --- | --- | --- | --- | --- |
| 31 | 4 | **Strech Sprint 10** |  | 11d | 2025-07-16 A | 2025-07-30 | 37% | 6.91d | 0d |  | 1144h | 369.6h |
| 32 | 4.1 | **NEW - PACSH-95801-[Working Session] ACI - Solution IBS CAN short NAK to generate Negative Acknowledgements with required payment & error info in RTPS for Manually Cancelled Payments** |  | 11d | 2025-07-16 A | 2025-07-30 | 5% | 10.45d |  |  | 352h | 17.6h |
| 33 | 4.1.1 | Generate pacs.002 CANC scenario for BIS source pacs.008 outbound message(future dated) | manual | 11d | 2025-07-16 A | 2025-07-30 | 20% | 8.8d |  | PCS | 88h | 17.6h |
| 34 | 4.1.2 | Analyze format fields of pacs.002 CANC | manual | 11d | 2025-07-16 | 2025-07-30 |  |  |  | PCS | 88h |  |
| 35 | 4.1.3 | Identify RTPS solution(GBM) for enrichment of two missing fields | manual | 11d | 2025-07-16 | 2025-07-30 |  |  |  | PCS | 88h |  |
| 36 | 4.1.4 | Check for enrichment rules(configurations) to be applied on the Pacs.002 CANC [BA NAK response] from MTS app config/development team | manual | 11d | 2025-07-16 | 2025-07-30 |  |  |  | PCS | 88h |  |
| 37 | 4.2 | **PACSH-79853-[Duplicate?] ACI - Enable FISC & CHATS Outbound Payment Processing lines in UPF - STRECH Story** |  | 11d | 2025-07-16 A | 2025-07-30 | 50% | 5.5d |  |  | 792h | 352h |
| 38 | 4.2.1 | Message Interface (MQ) | manual | 11d | 2025-07-16 A | 2025-07-30 A | 100% |  |  | PCS | 88h | 88h |
| 39 | 4.2.2 | Platform Manager | manual | 11d | 2025-07-16 A | 2025-07-30 A | 100% |  |  | PCS | 88h | 88h |
| 40 | 4.2.3 | MTS v6 Code Changes | manual | 11d | 2025-07-16 | 2025-07-30 |  |  |  | PCS | 88h |  |
| 41 | 4.2.4 | MTS v6 Config | manual | 11d | 2025-07-16 | 2025-07-30 |  |  |  | PCS | 88h |  |
| 42 | 4.2.5 | UPF-MCAS v5.0.4 Code Changes | manual | 11d | 2025-07-16 | 2025-07-30 |  |  |  | PCS | 88h |  |
| 43 | 4.2.6 | Control Centre Code Changes | manual | 11d | 2025-07-16 | 2025-07-30 |  |  |  | PCS | 88h |  |
| 44 | 4.2.7 | UPF EndpointConfig | manual | 11d | 2025-07-16 A | 2025-07-30 A | 100% |  |  | PCS | 88h | 88h |
| 45 | 4.2.8 | UPF Line Config | manual | 11d | 2025-07-16 A | 2025-07-30 A | 100% |  |  | PCS | 88h | 88h |
| 46 | 4.2.9 | Control Center Config | manual | 11d | 2025-07-16 | 2025-07-30 |  |  |  | PCS | 88h |  |
| 47 | 4.2.10 | **PACSH-96296-[STRETCH] [Working Session] ACI - Target 2 Camt.050 processing : end-end validations [using simulated samples]** |  | 11d | 2025-07-16 A | 2025-07-30 A | 100% |  |  |  |  |  |
| 48 | 4.2.10.1 | PACSH-96336-Validate incoming camt.025 matching for the outbound camt.050 [using simulated samples] | manual | 11d | 2025-07-16 A | 2025-07-30 A | 100% |  |  |  |  |  |
| 49 | 5 | **Sprint 11** |  | 10d? | 2025-07-31 A | 2025-08-13 A | 100% |  |  |  | 800h | 800h |
| 50 | 5.1 | **PACSH-96296-[Working session] ACI - Target2 Camt.050 processing : end-end validations.** |  | 10d | 2025-07-31 A | 2025-08-13 A | 100% |  |  | Sai | 240h | 240h |
| 51 | 5.1.1 | Downloaded the Camt.025 from TARGET2 EBA portal | manual | 10d | 2025-07-31 A | 2025-08-13 A | 100% |  |  | Sai | 80h | 80h |
| 52 | 5.1.2 | Validate incoming camt.025 matching for the outbound camt.050 [using simulated samples] | manual | 10d | 2025-07-31 A | 2025-08-13 A | 100% |  |  | Sai | 80h | 80h |
| 53 | 5.2 | PACSH-95820 ACI Ticket-3713432 -Requirements fo RTPS NY Bank(SSI) to support a new Fedwire ABA | manual | 10d | 2025-07-31 A | 2025-08-13 A | 100% |  |  | AmiT /PCS | 80h | 80h |
| 54 | 5.3 | PACSH-95825 ACI Ticket-03711383:Requirements fo ACI to configure new SSB IBT Tran codes to support BANK | manual | 10d? | 2025-07-31 A | 2025-08-13 A | 100% |  |  | SME / Bank; AmiT /PCS | 160h | 160h |
| 55 | 5.4 | PACSH-98277-Waiting update from ACI(Jessica) on the testing results for Trans | manual | 10d | 2025-07-31 A | 2025-08-13 A | 100% |  |  | Dolores | 80h | 80h |
| 56 | 5.5 | PACSH-82086-[Working Session] ACI - Target 2 pacs.009 [using simulated samples] [One STP & one Non-STP flow] | manual | 10d | 2025-07-31 A | 2025-08-13 A | 100% |  |  | Sai | 80h | 80h |
| 57 | 5.6 | PACSH-79853 RITS END-END Validations [one STP & one non-STP flow] | manual | 10d | 2025-07-31 A | 2025-08-13 A | 100% |  |  | Katheeja | 80h | 80h |
| 58 | 5.7 | PACSH-87211-[STRETCH-1][Working Session] ACI - LYNX END-END Validations | manual | 10d | 2025-07-31 A | 2025-08-13 A | 100% |  |  | Katheeja | 80h | 80h |

| ID | WBS | Task | Type | Duration | Start | Finish | Complete | Remaining | Total slack | Resources | Work |
| --- | --- | --- | --- | --- | --- | --- | --- | --- | --- | --- | --- |
| 59 | 6 | **Sprint 12** |  | 10d | 2025-08-14 A | 2025-08-27 | 83% | 1.67d | 0d |  |  |
| 60 | 6.1 | PACSH-95820 ACI Ticket-3713432 Solution fo RTPS NY Bank(SSI) to support a new Fedwire ABA | manual | 10d | 2025-08-14 A | 2025-08-27 A | 100% |  |  |  |  |
| 61 | 6.2 | PACSH-95825 ACI Ticket-03711383:Solution fo ACI to configure new SSB IBT Tran codes to support BANK | manual | 10d | 2025-08-14 A | 2025-08-27 A | 100% |  |  |  |  |
| 62 | 6.3 | PACSH-98277-Waiting update from ACI(Jessica) on the testing results for Trans | manual | 10d | 2025-08-14 A | 2025-08-27 | 40% | 6d |  |  |  |
| 63 | 6.4 | New Ticket for Camt050 matching to camt25 | manual | 10d | 2025-08-14 A | 2025-08-27 | 40% | 6d |  |  |  |
| 64 | 6.5 | New Ticket for RITS To load all BSB automatically in AUX | manual | 10d | 2025-08-14 A | 2025-08-27 | 70% | 3d |  |  |  |
| 65 | 6.6 | PACSH-79853 HK END-END Validations [one STP & one non-STP flow] | manual | 10d | 2025-08-14 A | 2025-08-27 A | 100% |  |  |  |  |
| 66 | 6.7 | PACSH-79853 TW END-END Validations [one STP & one non-STP flow] | manual | 10d | 2025-08-14 A | 2025-08-27 A | 100% |  |  |  |  |
| 67 | 6.8 | UPF config creation for Domestic BIS lines | manual | 10d | 2025-08-14 A | 2025-08-27 A | 100% |  |  |  |  |
| 68 | 6.9 | Prepare Domestic Test cases | manual | 10d | 2025-08-14 A | 2025-08-27 A | 100% |  |  |  |  |
| 70 | 7 | **PACSH-95801-[Working Session] ACI - Solution IBS CAN short NAK to generate Negative Acknowledgements with required payment & error info in RTPS for Manually Cancelled Payments** |  | 0d | 2025-07-11 | 2025-07-11 |  |  | 158d |  |  |
| 71 | 7.1 | Check for enrichment rules(configurations) to be applied on the Pacs.002 CANC [BA NAK response] from MTS app config/development team | manual | 31d | 2025-07-11 | 2025-08-22 |  |  |  |  |  |
| 72 | 7.2 | Identify RTPS solution(GBM) for enrichment of two missing fields | manual | 31d | 2025-07-11 | 2025-08-22 |  |  |  |  |  |
| 73 | 7.3 | Analyze format fields of pacs.002 CANC | manual | 31d | 2025-07-11 | 2025-08-22 |  |  |  |  |  |
| 74 | 7.4 | Generate pacs.002 CANC scenario for BIS source pacs.008 outbound message(future dated) | manual | 31d | 2025-07-11 | 2025-08-22 |  |  |  |  |  |
| 75 | 8 | PACSH-84210-Solution IBS CAN short NAK - ACI CASE 3735175 GBM Enterprise ISO : IBS NAK | manual | 1d | 2025-07-11 | 2025-07-11 |  |  |  |  |  |
| 76 | 9 | **Sprint 13** |  | 10d | 2025-08-28 A | 2025-09-10 | 38% | 6.15d | 0d |  | 240h |
| 77 | 9.1 | PACSH-102126-ACI - Aug 29 Delivery June SP Patch 2 | manual | 10d | 2025-08-28 A | 2025-09-10 A | 100% |  |  |  |  |
| 78 | 9.2 | PACSH-101086-[ENT ISO GBM - All Markets] [ACI # 3750220] ULTB & ULTD in URI of CBPR+MX is mapped to Ultimate Debtor and Ultimate Creditor in CHAPS & LYNX MX but address line with 'NOT PROVIDED' missing. | manual | 10d | 2025-08-28 | 2025-09-10 |  |  |  |  |  |
| 79 | 9.3 | PACSH-101227-WIP [ENT ISO GBM - All Markets] [ACI # 03750228] CDT party Derivation for ENT ISO - Bank Adapter flow for GBM UAT is now based on first party in credit chain. | manual | 10d | 2025-08-28 | 2025-09-10 |  |  |  |  |  |
| 80 | 9.4 | PACSH-101496-[ENT ISO - CHAPS] ACI# 03750295 CHAPS Outbound MT103 processed with CLSTIME , TILLTIME & REJTIME are routed to EXCQ with exception CLSTIME/REJTIME/TILTIME was found, but with an unknown format | manual | 10d | 2025-08-28 | 2025-09-10 |  |  |  | Neethu | 80h |
| 81 | 9.5 | PACSH-100530-Sai * ACI Ticket 03748411 for Target2 Camt.050 matching to camt.025 [ETA - Product ACI team revert by 26/08] | manual | 10d | 2025-08-28 A | 2025-09-10 | 50% | 5d |  |  |  |
| 82 | 9.6 | PACSH-100655-Katheeja * ACI Ticket 03748414 for RITS To load all BSB automatically in AUX [ETA - revert by mail on SSB findings 25/08 EOD and also the SME Call on solution is needed] | manual | 10d | 2025-08-28 A | 2025-09-10 | 50% | 5d |  |  |  |
| 83 | 9.7 | PACSH-101232-Sai * ACI Ticket 03749990 : (GBM)BIS1_SND line not trigerring to generate Exception NAK for transactions dropped to BIS_EXCQ | manual | 10d | 2025-08-28 | 2025-09-10 |  |  |  |  |  |
| 84 | 9.8 | PACSH-100897-Sai * ACI Ticket 03749658 : CreditPaymenttext tag and data not send in the FIRCO RFML request xml of the TARGET2 Camt.050 BA message in GBM-UAT Env. [ETA - SSB to provide MTS logs and ACI team to check with app-team and revert by 26/08] | manual | 10d | 2025-08-28 | 2025-09-10 |  |  |  | Sai | 80h |
| 85 | 9.9 | Need Story-Amit * [Solution Sign-off & Target Delivery] ACI Ticket 03713432 - ABA | manual | 10d | 2025-08-28 A | 2025-09-10 A | 100% |  |  |  |  |
| 86 | 9.10 | Need Story-Amit * [Solution Sign-off & Target Delivery] ACI Ticket 03711383 - IBT Tran Codes for Transact | manual | 10d | 2025-08-28 A | 2025-09-10 A | 100% |  |  |  |  |
| 87 | 9.11 | PACSH-100172-Oscar * ACI Ticket- 03749089 : Intercompany Bank Settlement | manual | 10d | 2025-08-28 A | 2025-09-10 A | 100% |  |  |  |  |
| 88 | 9.12 | PACSH-101501-[ENT ISO - CHATS] ACI# 3750296 CHATS OB PACS008 MX message is populated Local Instrument with Keyword CRED this is not present in CBPR+ MX | manual | 10d | 2025-08-28 | 2025-09-10 |  |  |  | Sai | 80h |
| 89 | 9.13 | PACSH-101607-[ENT ISO GBM - All Markets][ACI # 3750503] Instruction for Creditor Agent - Code data element is missed in the FINAL RTGS MX message when Inbound CBPR+ MX message contains both TAG 23E - PHOB or TELB & TAG 72 - ACC with Narrative Information. | manual | 10d | 2025-08-28 | 2025-09-10 |  |  |  |  |  |
| 90 | 10 | UPF configuration for BIS domestic / Unit testing for domestic BIS lines | manual | 10d | 2025-08-28 | 2025-09-10 |  |  |  |  |  |
| 91 | 11 | H24-693569 | manual | 1d | 2025-07-11 | 2025-07-11 |  |  |  | Sai | 8h |

| ID | WBS | Task | Type | Duration | Start | Finish | Complete | Remaining | Total slack | Resources | Work | Actual work |
| --- | --- | --- | --- | --- | --- | --- | --- | --- | --- | --- | --- | --- |
| 92 | 12 | **Sprint 14** |  | 10d | 2025-09-10 A | 2025-09-23 | 1% | 9.94d | 0d |  | 880h | 6h |
| 93 | 12.1 | ACI Ticket 03713432 - ABA | manual | 10d | 2025-09-10 A | 2025-09-23 | 3% | 9.75d |  | Amit | 80h | 2h |
| 94 | 12.2 | ACI Ticket 03711383 - IBT Tran Codes for Transact | manual | 10d | 2025-09-10 A | 2025-09-23 | 3% | 9.75d |  | Amit | 80h | 2h |
| 95 | 12.3 | ACI Ticket- 03749089 : Intercompany Bank Settlement | manual | 10d | 2025-09-10 A | 2025-09-23 | 3% | 9.75d |  | Amit | 80h | 2h |
| 96 | 12.4 | ACI #3748414I RITS BSB Solution. Holding up RITS Market Mandates / Bank Adapter Testing [ | manual | 10d | 2025-09-10 | 2025-09-23 |  |  |  | Katheeja | 80h |  |
| 97 | 12.5 | ACI #3744190] ACI to clarify on how RITS Specific BBAN (BSB + Acc no.) o | manual | 10d | 2025-09-10 | 2025-09-23 |  |  |  | Katheeja | 80h |  |
| 98 | 12.6 | [ACI # 3747933]CHAPS RTN Outbound PACS004 MX message generated for underlying Inbound PACS008 is missing Intermediary | manual | 10d | 2025-09-10 | 2025-09-23 |  |  |  | Katheeja | 80h |  |
| 99 | 12.7 | ACI# 3752816 -Target2 Camt.050 matching to camt.025 [ETA - Product ACI team revert by 26/08] | manual | 10d | 2025-09-10 | 2025-09-23 |  |  |  | Sai | 80h |  |
| 100 | 12.8 | 3749658- CreditPaymenttext tag and data not send in the FIRCO RFML request xml of the TARGET2 | manual | 10d | 2025-09-10 | 2025-09-23 |  |  |  | Sai | 80h |  |
| 101 | 12.9 | [ACI# 03753572] All CHIPS Outbound payments with Source BTR coming into RTPS via the Bank Adapter route to BTRLOEXCQ failing Credit Party Derivation. | manual | 10d | 2025-09-10 | 2025-09-23 |  |  |  | Paul | 80h |  |
| 102 | 12.10 | ACI # 3753974] RPH UAT Transactions not routing to BTRLORPRQ, BTRHIRPRQ and STP_HOLDQ | manual | 10d | 2025-09-10 | 2025-09-23 |  |  |  |  |  |  |
| 103 | 12.11 | ACI #3488943 CREDITOR Account no. including spaces from MTS messages | manual | 10d | 2025-09-10 | 2025-09-23 |  |  |  | Paula | 80h |  |
| 104 | 12.12 | ACI #3747154 - lYNX inbound PACS008 MX message processsed with Account | manual | 10d | 2025-09-10 | 2025-09-23 |  |  |  | Scott | 80h |  |
| 105 | 13 | Sprint14 streech | manual | 1d? | 2025-07-11 | 2025-07-11 |  |  |  |  |  |  |
| 106 | 14 | **Sprint 15** |  | 10d | 2025-09-25 | 2025-10-08 |  |  | 0d |  |  |  |
| 107 | 14.1 | ACI # 0375022RTPS # 102311PACSH-101227PP @P1 Slotting* [ENT ISO GBM - All Markets] [ACI # 03750228/RTPS-102311] | manual | 10d | 2025-09-25 | 2025-10-08 |  |  |  |  |  |  |
| 108 | 14.2 | ACI # 03747933RTPS # 102313PACSH-100050P1 Slotting* [ACI # 3747933/RTPS-102313]CHAPS RTN Outbound PACS004 MX message generated for underlying Inbound PACS008 is missing Intermediary & Previous instructing Agent Data elements information under Return Chain | manual | 10d | 2025-09-25 | 2025-10-08 |  |  |  |  |  |  |
| 109 | 14.3 | ACI # 03753572PACSH-103646PP P1 Sai * [ENT ISO - CHIPS] - [ACI# 03753572] All CHIPS Outbound payments with Source BTR coming into RTPS via the Bank Adapter route to BTRLOEXCQ failing Credit Party Derivation. | manual | 10d | 2025-09-25 | 2025-10-08 |  |  |  |  |  |  |
| 110 | 14.4 | ACI # 03753974PACSH-103645PP P1 Sai * [ACI # 3753974] RPH UAT Transactions not routing to BTRLORPRQ, BTRHIRPRQ and STP_HOLDQ | manual | 10d | 2025-09-25 | 2025-10-08 |  |  |  |  |  |  |
| 111 | 14.5 | ACI #03757095PACSH-97177Katheeja?*PP ACI #3757095 User is not allowed to create RITS MRT PACS004 due to exception "BSB for Rtr_Cdtr cannot be found on AUX". | manual | 10d | 2025-09-25 | 2025-10-08 |  |  |  |  |  |  |
| 112 | 14.6 | ACI #03744190RTPS # 10166PACSH-97368P1 Slotting* [ACI #03744190/RTPS-101664] RITS Outbound MX payment received with BSB code under CredtorAgt are routed to BISEXCQ with the exception "BSB for Dbtr cannot be found on AUX or BSB for CdtrAgt cannot be found | manual | 10d | 2025-09-25 | 2025-10-08 |  |  |  |  |  |  |
| 113 | 14.7 | ACI # 03757483PACSH-96956PP ACI #3744190/3757483??? RITS Outbound MT payment received with BSB code under TAG 57 are routed to IBS EXCQ with the exception "BSB for Dbtr cannot be found on AUX or BSB for CdtrAgt cannot be found on AUX". | manual | 10d | 2025-09-25 | 2025-10-08 |  |  |  |  |  |  |
| 114 | 15 | **Sprint 16** |  | 10d | 2025-10-09 A | 2025-10-22 | 35% | 6.5d | 0d |  |  |  |
| 115 | 15.1 | PACSH-107331Amit * [Config-Part 2] ACI Ticket 03713432 - ABA | manual | 10d | 2025-10-09 A | 2025-10-22 | 50% | 5d |  |  |  |  |
| 116 | 15.2 | PACSH-107336Sai & Katheeja * [TEsting 35 Use Cases] ACI Ticket 03713432 - ABA | manual | 10d | 2025-10-09 A | 2025-10-22 | 50% | 5d |  |  |  |  |
| 117 | 15.3 | PACSH-106948Amit * [POC & Additional Scenarios in Reqts] ACI Ticket- 03749089 : Intercompany Bank Settlement | manual | 10d | 2025-10-09 A | 2025-10-22 | 50% | 5d |  |  |  |  |
| 118 | 15.4 | Investigate[ACI # 3761072] GBM RITS - Custom mapping to add BBAN in CreditorAcct in RITS Outbound PACS008 message. | manual | 10d | 2025-10-09 | 2025-10-22 |  |  |  |  |  |  |
| 119 | 15.5 | Investigate*SSB Config WIP* [ACI # 3757987] GBM UAT - Outbound PACS transactions received as part of Bank Adapter (BIS) flow are routed to market specific Inbound exception queues such as RTS_EXCQ, CAD_EXCQ instead of BIS_EXCQ after performing manual oper | manual | 10d | 2025-10-09 A | 2025-10-22 | 25% | 7.5d |  |  |  |  |

| ID | WBS | Task | Type | Duration | Start | Finish | Complete | Remaining |
| --- | --- | --- | --- | --- | --- | --- | --- | --- |
| 120 | 16 | **Sprint 17** |  | 10d | 2025-10-23 A | 2025-11-05 | 71% | 2.86d |
| 121 | 16.1 | PACSH-107331Amit * [Config-Part 2] ACI Ticket 03713432 - ABA | manual | 10d | 2025-10-23 | 2025-11-05 |  |  |
| 122 | 16.2 | PACSH-107336Sai & Katheeja * [TEsting 35 Use Cases] ACI Ticket 03713432 - ABA | manual | 10d | 2025-10-23 | 2025-11-05 |  |  |
| 123 | 16.3 | PACSH-106948Amit * [POC & Additional Scenarios in Reqts] ACI Ticket- 03749089 : Intercompany Bank Settlement | manual | 10d | 2025-10-23 A | 2025-11-05 A | 100% |  |
| 124 | 16.4 | [03765334]-H24-705897-SSC/MTS/ BTR1_SND Trap | manual | 10d | 2025-10-23 A | 2025-11-05 A | 100% |  |
| 125 | 16.5 | [03767962]-H24-707995-RITS Outbound Exceptions / BSB for Dbtr cannot be found on AUX - 2025110300005381 | manual | 10d | 2025-10-23 A | 2025-11-05 A | 100% |  |
| 126 | 16.6 | [03767966]-H24-707999-RITS Outbound Exceptions / BSB for CdtrAgnt cannot be found on AUX | manual | 10d | 2025-10-23 A | 2025-11-05 A | 100% |  |
| 127 | 16.7 | 03768607]-H24-708491-RITS Outbound derivation - Branch BIC vs Home-Branch BIC | manual | 10d | 2025-10-23 A | 2025-11-05 A | 100% |  |
| 128 | 17 | **Sprint 18** |  | 10d | 2025-11-06 A | 2025-11-19 | 63% | 3.75d |
| 129 | 17.1 | PACSH-107331Amit * [Config-Part 2] ACI Ticket 03713432 - ABA | manual | 10d | 2025-11-06 | 2025-11-19 |  |  |
| 130 | 17.2 | PACSH-107336Sai & Katheeja * [TEsting 35 Use Cases] ACI Ticket 03713432 - ABA | manual | 10d | 2025-11-06 | 2025-11-19 |  |  |
| 131 | 17.3 | PACSH-106948Amit * [POC & Additional Scenarios in Reqts] ACI Ticket- 03749089 : Intercompany Bank Settlement | manual | 10d | 2025-11-06 | 2025-11-19 |  |  |
| 132 | 17.4 | [03769558]-H24-709214-SSG / MTS / Processes getting TRAPPED | manual | 10d | 2025-11-06 A | 2025-11-19 A | 100% |  |
| 133 | 17.5 | [03769508]-H24-709169-RITS Cross Border payments - Message Header Issue - FAILED | manual | 10d | 2025-11-06 A | 2025-11-19 A | 100% |  |
| 134 | 17.6 | [03771491]-H24-710860-PROD: ssi_fcs_rcv line is trapped due to a transaction | manual | 10d | 2025-11-06 A | 2025-11-19 A | 100% |  |
| 135 | 17.7 | [03771629]-H24-710985SSC/MTS/FED1_SND line going down multiple times in PROD / FED ISO | manual | 10d | 2025-11-06 A | 2025-11-19 A | 100% |  |
| 136 | 17.8 | [03771976]-H24-711312-CHIPS ISO Inbound - Field 72 OBI/BBI long characters | manual | 10d | 2025-11-06 A | 2025-11-19 A | 100% |  |
| 137 | 18 | **Sprint 19** |  | 10d | 2025-11-20 A | 2025-12-03 | 15% | 8.5d |
| 138 | 18.1 | PACSH-107331Amit * [Config-Part 2] ACI Ticket 03713432 - ABA | manual | 10d | 2025-11-20 A | 2025-12-03 A | 100% |  |
| 139 | 18.2 | PACSH-107336Sai & Katheeja * [TEsting 35 Use Cases] ACI Ticket 03713432 - ABA | manual | 10d | 2025-11-20 A | 2025-12-03 | 80% | 2d |
| 140 | 18.3 | PACSH-106948Amit * [POC & Additional Scenarios in Reqts] ACI Ticket- 03749089 : Intercompany Bank Settlement | manual | 10d | 2025-11-20 | 2025-12-03 |  |  |
| 141 | 18.4 | 03771764-H24-711114-Huge no of errors in mcas_reject2 | manual | 10d | 2025-11-20 | 2025-12-03 |  |  |
| 142 | 18.5 | 03772664-H24-711901-SSC / MTS - Invalid Country of Residence Country Code. | manual | 10d | 2025-11-20 | 2025-12-03 |  |  |
| 143 | 18.6 | 03772737-H24-711986-RITS Payment Failure During Penny Testing RITS MX Outbound message in SSR2025 mode failed to BIS_EXCQ | manual | 10d | 2025-11-20 | 2025-12-03 |  |  |
| 144 | 18.7 | 03772783-H24-712032-SSC-RTPS PROD-RITS Outbound payments are not routed to BIS_EXCQ for incorrect BBAN format | manual | 10d | 2025-11-20 | 2025-12-03 |  |  |
| 145 | 18.8 | 03772743-H24-711992-RPH-Prod Env : Control Center slowness issue | manual | 10d | 2025-11-20 | 2025-12-03 |  |  |
| 146 | 18.9 | 03772746-H24-711995-Data retention policy in MCAS | manual | 10d | 2025-11-20 | 2025-12-03 |  |  |
| 147 | 18.10 | 03772839-H24-712079-Java Errors in MCAS_REJECT2 | manual | 10d | 2025-11-20 | 2025-12-03 |  |  |
| 148 | 18.11 | 03772835-H24-712075-Script Errors in mcas_reject2 | manual | 10d | 2025-11-20 | 2025-12-03 |  |  |
| 149 | 18.12 | 03773245-H24-712438-inbound Chips Own BIC Rule Not Working (Works on FED IB) | manual | 10d | 2025-11-20 | 2025-12-03 |  |  |

| ID | WBS | Task | Type | Duration | Start | Finish | Complete | Remaining |
| --- | --- | --- | --- | --- | --- | --- | --- | --- |
| 150 | 19 | **Sprint 20** |  | 10d | 2025-12-04 | 2025-12-17 |  |  |
| 151 | 19.1 | 03771764-H24-711114-Huge no of errors in mcas_reject2 | manual | 10d | 2025-12-04 | 2025-12-17 |  |  |
| 152 | 19.2 | 03772664-H24-711901-SSC / MTS - Invalid Country of Residence Country Code. | manual | 10d | 2025-12-04 | 2025-12-17 |  |  |
| 153 | 19.3 | 03772737-H24-711986-RITS Payment Failure During Penny Testing RITS MX Outbound message in SSR2025 mode failed to BIS_EXCQ | manual | 10d | 2025-12-04 | 2025-12-17 |  |  |
| 154 | 19.4 | 03772783-H24-712032-SSC-RTPS PROD-RITS Outbound payments are not routed to BIS_EXCQ for incorrect BBAN format | manual | 10d | 2025-12-04 | 2025-12-17 |  |  |
| 155 | 19.5 | 03772743-H24-711992-RPH-Prod Env : Control Center slowness issue | manual | 10d | 2025-12-04 | 2025-12-17 |  |  |
| 156 | 19.6 | 03772746-H24-711995-Data retention policy in MCAS | manual | 10d | 2025-12-04 | 2025-12-17 |  |  |
| 157 | 19.7 | 03772839-H24-712079-Java Errors in MCAS_REJECT2 | manual | 10d | 2025-12-04 | 2025-12-17 |  |  |
| 158 | 19.8 | 03772835-H24-712075-Script Errors in mcas_reject2 | manual | 10d | 2025-12-04 | 2025-12-17 |  |  |
| 159 | 19.9 | 03773245-H24-712438-inbound Chips Own BIC Rule Not Working (Works on FED IB) | manual | 10d | 2025-12-04 | 2025-12-17 |  |  |
| 160 | 20 | **Sprint 21** |  | 10d | 2025-12-26 A | 2026-01-08 | 30% | 7d |
| 161 | 20.1 | PACSH-107336Sai & Katheeja * [TEsting 35 Use Cases] ACI Ticket 03713432 - ABA | manual | 10d | 2025-12-26 | 2026-01-08 |  |  |
| 162 | 20.2 | PACSH-107336Sai & Katheeja * [TEsting 35 Use Cases] ACI Ticket 03713432 - ABA | manual | 10d | 2025-12-26 | 2026-01-08 |  |  |
| 163 | 20.3 | [ACI #0377421]Katheeja Field 72 Need sequencing change | manual | 10d | 2025-12-26 | 2026-01-08 |  |  |
| 164 | 20.4 | PASCH-116708 PP * Amit [SSB to provide samples] [Add details & close RPH ACI# 03771976 fiel 72 | manual | 10d | 2025-12-26 | 2026-01-08 |  |  |
| 165 | 20.5 | PASCH-107355 Tejas/Sai [Testing[ ACI Ticket0371383 60 cases MPA & Transcodes | manual | 10d | 2025-12-26 | 2026-01-08 |  |  |
| 166 | 20.6 | PASCH-116708 PP * Amit [SSB to provide samples] [Add details & close RPH ACI# 03771976 fiel 72 | manual | 10d | 2025-12-26 | 2026-01-08 |  |  |
| 167 | 20.7 | PASCH-1121684 Amit **[BUG] ACI to undate number DDA AUTH and Post lines | manual | 10d | 2025-12-26 | 2026-01-08 |  |  |
| 168 | 20.8 | PASCH-117577 Amit * [2nd Week Jan] ACI Roadmap /Milestones for Intercompany re | manual | 10d | 2025-12-26 A | 2026-01-08 A | 100% |  |
| 169 | 20.9 | PASCH-121034 Amit * ACI to review req for Risk Queue | manual | 10d | 2025-12-26 A | 2026-01-08 A | 100% |  |
| 170 | 20.10 | PASCH-120091 Oscar * Lastest ACI 2026 High Value Payment Roadmap | manual | 10d | 2025-12-26 A | 2026-01-08 A | 100% |  |
| 171 | 21 | **Sprint 22** |  | 10d | 2026-01-08 | 2026-01-21 |  |  |
| 172 | 21.1 | PACSH-121920-* ACI #03779477 Control Center December Service Pack Installation Errors | manual | 10d | 2026-01-08 | 2026-01-21 |  |  |
| 173 | 21.2 | <New Task> | manual | 10d | 2026-01-08 | 2026-01-21 |  |  |
| 174 | 21.3 | PACSH-107336Sai & Katheeja * [TEsting 35 Use Cases] ACI Ticket 03713432 - ABA | manual | 10d | 2026-01-08 | 2026-01-21 |  |  |
| 175 | 21.4 | PACSH-107336Sai & Katheeja * [TEsting 35 Use Cases] ACI Ticket 03713432 - ABA | manual | 10d | 2026-01-08 | 2026-01-21 |  |  |
| 176 | 21.5 | [ACI #0377421]Katheeja Field 72 Need sequencing change | manual | 10d | 2026-01-08 | 2026-01-21 |  |  |

| ID | WBS | Task | Type | Duration | Start | Finish | Complete | Remaining | Resources | Work | Actual work |
| --- | --- | --- | --- | --- | --- | --- | --- | --- | --- | --- | --- |
| 177 | 22 | **Sprint 23** |  | 10d? | 2026-01-22 A | 2026-02-04 | 4% | 9.65d? |  | 1360h | 48h |
| 178 | 22.1 | PACSH-121920-* ACI #03779477 Control Center December Service Pack Installation Errors | manual | 10d | 2026-01-29 A | 2026-02-11 | 8% | 9.2d | Paul | 80h | 6.4h |
| 179 | 22.2 | ACI # 03777412 ISO 20022: UPF Control Center - Super1 Login - null | manual | 10d | 2026-01-22 A | 2026-02-04 | 3% | 9.7d | Paul | 80h | 2.4h |
| 180 | 22.3 | RTPS-107299-Functional cancellations trapping for all Book To Book Transfer transactions in State Street Domestic | manual | 10d | 2026-01-22 A | 2026-02-04 | 8% | 9.2d | PCS | 80h | 6.4h |
| 181 | 22.4 | RTPS-107058-Reverse Posting for Functional cancel doesn't happen for Bank Adapter/Manual Create messages for Transact accounts | manual | 10d | 2026-01-22 | 2026-02-04 |  |  | jean | 80h |  |
| 182 | 22.5 | RTPS-107967-RTPS-106764- Due to an emergency out of cycle for other customers, this Jira needs to be moved to Ready for Delivery early. This code should not be delivered to the customer until full testing is completed under the cloned Jira | manual | 10d | 2026-01-22 A | 2026-02-04 | 1% | 9.9d | Neethu | 80h | 0.8h |
| 183 | 22.6 | PACSH-121034-Amit * ACI to Review Requirement for RISK Queue | manual | 10d | 2026-01-22 A | 2026-02-04 | 3% | 9.7d | Amit | 80h | 2.4h |
| 184 | 22.7 | PACSH-113420-Need SSB Reqt * Amit * [Analysis Direct Cover Scenario] ACI Ticket-03749089: Intercompany Bank Settlement | manual | 10d | 2026-01-22 A | 2026-02-04 | 3% | 9.7d | Amit | 80h | 2.4h |
| 185 | 22.8 | RTPS-106276 Intercompany test (100 test cases) | manual | 10d | 2026-01-22 | 2026-02-04 |  |  | PCS | 80h |  |
| 186 | 22.9 | RTPS-85173- PP * Date for a Date Q1 2026 * ACI Ticket 03748411/RTPS-101750 for Target2 Camt.050 matching to camt.025 | manual | 10d | 2026-01-22 | 2026-02-04 |  |  | Pro | 80h |  |
| 187 | 22.10 | RTPS-106930-PP Sai* [ACI #03757439]TARGET2 Outbound CAMT050 MX Message - SAA Header Section populated with incorrect values under certain data elements. | manual | 10d | 2026-01-22 | 2026-02-04 |  |  | Sai | 80h |  |
| 188 | 22.11 | RTPS-107894-PP Sai* ACI# 3757391 TARGET2 - ACK TRN's are not received in MTS and matched with original outbound transaction. | manual | 10d | 2026-01-22 | 2026-02-04 |  |  | Tejas | 80h |  |
| 189 | 22.12 | RTPS-107959- PP Sai* ACI# 3757393 TARGET2 - Outbound PACS009 with Receiver/Cdtr Agt - BCITITMMXXX is routed to EXCQ due to TGT Channel Derivation issue | manual | 10d | 2026-01-22 | 2026-02-04 |  |  | Tejas | 80h |  |
| 190 | 22.13 | RTPS-105098-RTPS-106826- PP * Amit [SSB to provide samples] [ Add details & close RPH ACI# 03771976 - Filed72 length issue. | manual | 10d | 2026-01-22 A | 2026-02-04 | 9% | 9.1d | Katheeja | 80h | 7.2h |
| 191 | 22.14 | RTPS-106921- PP ACI Ticket # 03775326 - RTPS dropping LEI in CHAPS | manual | 10d | 2026-01-22 A | 2026-02-04 | 5% | 9.5d | Sai/prod | 80h | 4h |
| 192 | 22.15 | RTPS-107539 -MTS routing issue: Payment flagged for TRS still routed to Hogan queue (DDA_AUTQ) | manual | 10d | 2026-01-22 A | 2026-02-04 | 10% | 9d | Katheeja | 80h | 8h |
| 193 | 22.16 | RTPS-107540 -Junk Characters -MTS to Transact: Login request contains junk characters | manual | 10d | 2026-01-22 | 2026-02-04 |  |  | Tejas | 80h |  |
| 194 | 22.17 | MIP-3000-H24-697226- Wait-Posting event not sent for messages with source BTR from MTS to UPF(Domestic) | manual | 10d | 2026-01-22 A | 2026-02-04 | 10% | 9d | Tejas | 80h | 8h |
| 195 | 23 | **Sprint 24** |  | 10d | 2026-02-04 | 2026-02-17 |  |  |  |  |  |
| 196 | 23.1 | 03711383-MPAnewLines-H24-658385-RTPS-107058-Reverse Posting for Functional cancel doesn't happen for Bank Adapter/Manual Create messages for Transact accounts | manual | 1d? | 2026-02-04 | 2026-02-04 |  |  |  |  |  |
| 197 | 23.2 | 03786990-New Requirement[ Direct Cover Scenario] | manual | 1d? | 2026-02-04 | 2026-02-04 |  |  |  |  |  |
| 198 | 23.3 | 03749089-Interbank Settlement Requirement | manual | 1d? | 2026-02-04 | 2026-02-04 |  |  |  |  |  |
| 199 | 23.4 | 03785698-Other-Cases-H24-723416-SSC/MTS/FED Payments incorrectly routing through CHP | manual | 1d? | 2026-02-04 | 2026-02-04 |  |  |  |  |  |
| 200 | 23.5 | 03757393-Target-Cases-H24-699336-RTPS-107959-Outbound PACS009 with Receiver/Cdtr Agt - BCITITMMXXX is routed to EXCQ due to TGT Channel Derivation issue. | manual | 1d? | 2026-02-04 | 2026-02-04 |  |  |  |  |  |
| 201 | 23.6 | 03757391-Target-Cases-H24-699334-RTPS-107894-ACK TRN's are not received in MTS and matched with original outbound transaction | manual | 1d? | 2026-02-04 | 2026-02-04 |  |  |  |  |  |
| 202 | 23.7 | 03787561-Inquiry-H24-725111-handling of drawdown messages for Fedwire(looking for ISO messages) | manual | 1d? | 2026-02-04 | 2026-02-04 |  |  |  |  |  |
| 203 | 23.8 | 03775326-Other-cases-H24-714233-RTPS-106921 | manual | 1d? | 2026-02-04 | 2026-02-04 |  |  |  |  |  |
| 204 | 23.9 | 03779477-UPF-H24-717875-Control Center December Service Pack Installation Errors | manual | 1d? | 2026-02-04 | 2026-02-04 |  |  |  |  |  |
| 205 | 23.10 | 03785698-H24-723416 | manual | 1d? | 2026-02-04 | 2026-02-04 |  |  |  |  |  |
| 206 | 23.11 | RTPS-108560-SSB-FEDISO-Inbound-PACS004 routing into Exception Queue | manual | 1d? | 2026-02-04 | 2026-02-04 |  |  |  |  |  |

| ID | WBS | Task | Type | Duration | Start | Finish | Total slack |
| --- | --- | --- | --- | --- | --- | --- | --- |
| 207 | 24 | **Sprint 25** |  | 0d | 2025-07-11 | 2025-07-11 | 158d |
| 208 | 24.1 | 03711383-MPA new Lines | manual | 1d | 2026-02-04 | 2026-02-04 |  |
| 209 | 24.2 | 03786990-New Requirement[ Direct Cover Scenario] | manual | 1d | 2026-02-04 | 2026-02-04 |  |
| 210 | 24.3 | 03749089-Interbank Settlement Requirement | manual | 1d | 2026-02-04 | 2026-02-04 |  |
| 211 | 24.4 | 03785698-Other Cases | manual | 1d | 2025-07-11 | 2025-07-11 |  |
| 212 | 24.5 | 03757393-Target Cases | manual | 1d | 2025-07-11 | 2025-07-11 |  |
| 213 | 24.6 | 03757391-Target Cases | manual | 1d | 2025-07-11 | 2025-07-11 |  |
| 214 | 24.7 | 03787561-Inquiry | manual | 1d | 2025-07-11 | 2025-07-11 |  |
| 215 | 24.8 | 03775326-Other cases | manual | 1d | 2025-07-11 | 2025-07-11 |  |
| 216 | 24.9 | 03779477-UPF | manual | 1d | 2025-07-11 | 2025-07-11 |  |
| 217 | 24.10 | 03785698-H24-723416 | manual | 1d | 2025-07-11 | 2025-07-11 |  |
| 218 | 24.11 | RTPS-108560 | manual | 1d | 2025-07-11 | 2025-07-11 |  |
| 219 | 24.12 | 03789209-raised for AUX LEI addition - Process TRAP issue | manual | 1d | 2025-07-11 | 2025-07-11 |  |
| 220 | 24.13 | 03787642-WebUI WebSphere Upgrade Issues | manual | 1d | 2025-07-11 | 2025-07-11 |  |
| 221 | 24.14 | Inquiry-Compatability of old UPF version with March SP | manual | 1d | 2025-07-11 | 2025-07-11 |  |
| 222 | 24.15 | Inquiry-UPF fix for Duplicate issue should be ported to future releases March SP | manual | 1d | 2025-07-11 | 2025-07-11 |  |
| 223 | 24.16 | Inquiry-Mayjane : Camt.050/Camt.025/head.04 version change in March SP | manual | 1d | 2025-07-11 | 2025-07-11 |  |
| 224 | 24.17 | 03711383-MPA bank asking | manual | 1d | 2025-07-11 | 2025-07-11 |  |
